Schedule from MS Project, 2022-09-01 to 2023-07-25, costs in ₽.

## Calendars

- Проект "Разработка внедрение ИСУП": Mon-Fri 09:00-13:00, 14:00-18:00; Sat-Sun off. Exceptions (off unless hours are given): 2022-11-04 (День народного единства), 2023-01-01 to 2023-01-10 (Новогодние праздники), 2023-02-23 (День защиты отечества), 2023-03-08 (Международный женский день), 2023-05-01 (1 мая), 2023-05-09 (9 мая).

## Resources

| Resource | Group | Rate |
| --- | --- | --- |
| Данилов А.В | Руководитель проекта | 680 |
| Иванова Р.С. | Аналитик | 340 |
| Ломанов П.А. | Методолог | 300 |
| Петров А.А. | Архитектор ПО | 450 |
| Калиничев Д.И. | Разработчик ПО | 300 |
| Рысаков А.Р. | Разработчик ПО | 300 |
| Кузьмин Г.В. | Разработчик ПО | 300 |
| Золотарев В.А. | Разработчик ПО | 300 |
| Исакова П.Д | Технический писатель | 300 |
| Жорин У.Д. | Технический писатель | 300 |
| Тестировщик |  | 330 |
| Командировочные |  |  |
| Демин И.В. | Технолог по разработке ПО | 340 |
| Зуев Р.М. | Технолог по разработке ПО | 340 |

## Schedule

| ID | WBS | Task | Type | Duration | Start | Finish | Predecessors | Baseline start | Baseline finish | Baseline duration | Total slack | Resources | Work | Cost | Baseline cost |
| --- | --- | --- | --- | --- | --- | --- | --- | --- | --- | --- | --- | --- | --- | --- | --- |
| 1 | 1 | Подписание договора | milestone | 0d | 2022-09-01 | 2022-09-01 |  | 2022-09-01 | 2022-09-01 | 0d | 0d |  |  |  |  |
| 2 | 2 | **Подготовительные работы** |  | 10d | 2022-09-01 | 2022-09-14 | 1 | 2022-09-01 | 2022-09-14 | 10d | 0d |  | 160h | 80,000 | 80,000 |
| 3 | 2.1 | Определениецелей и назначения системы |  | 5d | 2022-09-01 | 2022-09-07 |  | 2022-09-01 | 2022-09-07 | 5d | 0d | Данилов А.В; Иванова Р.С. | 80h | 40,800 | 40,800 |
| 4 | 2.2 | Определение участников проекта |  | 5d | 2022-09-08 | 2022-09-14 | 3 | 2022-09-08 | 2022-09-14 | 5d | 0d | Данилов А.В | 40h | 27,200 | 27,200 |
| 5 | 2.3 | Разработка устава проекта |  | 5d | 2022-09-08 | 2022-09-14 | 3 | 2022-09-08 | 2022-09-14 | 5d | 0d | Ломанов П.А. | 40h | 12,000 | 12,000 |
| 6 | 2.4 | Окончание подготовительных работ(веха) | milestone | 0d | 2022-09-14 | 2022-09-14 | 5 | 2022-09-14 | 2022-09-14 | 0d | 0d |  |  |  |  |
| 7 | 3 | **Обследование бизнес процессов, формирование ТЗ** |  | 22d | 2022-09-15 | 2022-10-14 | 2 | 2022-09-15 | 2022-10-12 | 20d | 0d |  | 176h | 61,000 | 56,200 |
| 8 | 3.1 | Обследование бизнес процессов |  | 5d | 2022-09-15 | 2022-09-21 |  | 2022-09-15 | 2022-09-21 | 5d | 0d | Иванова Р.С.; Командировочные [0.1%] | 40h | 18,600 | 18,600 |
| 9 | 3.2 | Постановка задачи |  | 5d | 2022-09-22 | 2022-09-28 | 8 | 2022-09-22 | 2022-09-28 | 5d | 0d | Иванова Р.С. | 40h | 13,600 | 13,600 |
| 10 | 3.3 | Формирование ТЗ на разработку ИСУП |  | 12d | 2022-09-29 | 2022-10-14 | 9 | 2022-09-29 | 2022-10-12 | 10d | 0d | Жорин У.Д. | 96h | 28,800 | 24,000 |
| 11 | 3.4 | Согласование ТЗ на разработку ИСУП (веха) | milestone | 0d | 2022-10-14 | 2022-10-14 | 10 | 2022-10-12 | 2022-10-12 | 0d | 0d |  |  |  |  |
| 12 | 4 | **Разработка и адаптация системы** |  | 80d | 2022-10-17 | 2023-02-15 | 7 | 2022-10-13 | 2023-02-14 | 81d | 0d |  | 1280h | 403,200 | 403,200 |
| 13 | 4.1 | Определение подсистем ИСУП |  | 10d | 2022-10-17 | 2022-10-28 |  | 2022-10-13 | 2022-10-26 | 10d | 70d | Петров А.А. | 80h | 36,000 | 36,000 |
| 14 | 4.2 | **Проектирование и адаптация подсистемм ИСУП** |  | 80d | 2022-10-17 | 2023-02-15 |  | 2022-10-13 | 2023-02-14 | 81d | 0d |  | 1200h | 367,200 | 367,200 |
| 15 | 4.2.1 | Проектирование подсистемы проектного бюджетирования |  | 25d | 2022-10-17 | 2022-11-18 |  | 2022-10-13 | 2022-11-16 | 25d | 24d | Калиничев Д.И. | 200h | 60,000 | 60,000 |
| 16 | 4.2.2 | Проектирование подсистемы учета трудозатрат по проектам |  | 50d | 2022-10-17 | 2022-12-23 |  | 2022-10-13 | 2022-12-21 | 50d | 0d | Калиничев Д.И.; Рысаков А.Р. | 400h | 120,000 | 120,000 |
| 17 | 4.2.3 | Проектирование подсистемы календарного сетевого планирования |  | 25d | 2022-10-17 | 2022-11-18 |  | 2022-10-13 | 2022-11-16 | 25d | 24d | Кузьмин Г.В. | 200h | 60,000 | 60,000 |
| 18 | 4.2.4 | Адаптация подсистем ИСУП |  | 20d | 2022-12-26 | 2023-01-20 | 15, 16, 17 | 2022-12-22 | 2023-01-18 | 20d | 0d | Золотарев В.А. | 160h | 48,000 | 48,000 |
| 19 | 4.2.5 | Тестирование ИСУП |  | 15d | 2023-01-23 | 2023-02-15 | 18 | 2023-01-19 | 2023-02-14 | 15d | 0d | Тестировщик [200%] | 240h | 79,200 | 79,200 |
| 20 | 4.2.6 | Тестирование ИСУП завершение (веха) | milestone | 0d | 2023-02-15 | 2023-02-15 | 19 | 2023-02-14 | 2023-02-14 | 0d | 0d |  |  |  |  |
| 21 | 5 | **Внедрение ИСУП** |  | 110d | 2023-02-16 | 2023-07-25 | 12 | 2023-02-15 | 2023-07-24 | 110d | 0d |  | 912h | 326,240 | 326,240 |
| 22 | 5.1 | **Подготовак инфраструктуры** |  | 11d | 2023-02-16 | 2023-03-03 |  | 2023-02-15 | 2023-03-02 | 11d | 0d |  | 96h | 43,200 | 43,200 |
| 23 | 5.1.1 | Подготовка инфраструктуры для развертывания ИСУП |  | 12d | 2023-02-16 | 2023-03-03 |  | 2023-02-15 | 2023-03-02 | 12d | 0d | Петров А.А. | 96h | 43,200 | 43,200 |
| 24 | 5.2 | **Опытная эксплуатация** |  | 78d | 2023-03-06 | 2023-06-26 | 22 | 2023-03-03 | 2023-06-23 | 78d | 0d |  | 648h | 232,640 | 232,640 |
| 25 | 5.2.1 | Разработка сопроводительной документации для эксплуатации |  | 7d | 2023-03-06 | 2023-03-14 |  | 2023-03-03 | 2023-03-13 | 7d | 0d | Иванова Р.С. | 56h | 19,040 | 19,040 |
| 26 | 5.2.2 | Опытная эксплуатация |  | 30d | 2023-03-15 | 2023-04-25 | 25 | 2023-03-14 | 2023-04-24 | 30d | 0d | Ломанов П.А. | 240h | 72,000 | 72,000 |
| 27 | 5.2.3 | Оценка соответсвтия системы ТЗ |  | 30d | 2023-04-26 | 2023-06-06 | 26 | 2023-04-25 | 2023-06-05 | 30d | 0d | Петров А.А. | 240h | 108,000 | 108,000 |
| 28 | 5.2.4 | Устранение замечаний в работе ИСУП |  | 14d | 2023-06-07 | 2023-06-26 | 27 | 2023-06-06 | 2023-06-23 | 14d | 0d | Рысаков А.Р. | 112h | 33,600 | 33,600 |
| 29 | 5.2.5 | Окончание опытной эксплуатации | milestone | 0d | 2023-06-26 | 2023-06-26 | 28 | 2023-06-23 | 2023-06-23 | 0d | 0d | Демин И.В. |  |  |  |

| ID | WBS | Task | Type | Duration | Start | Finish | Predecessors | Baseline start | Baseline finish | Baseline duration | Total slack | Resources | Work | Cost | Baseline cost |
| --- | --- | --- | --- | --- | --- | --- | --- | --- | --- | --- | --- | --- | --- | --- | --- |
| 30 | 5.3 | **Передача в промышленную эксплуатацию** |  | 21d | 2023-06-26 | 2023-07-25 | 24 | 2023-06-23 | 2023-07-24 | 21d | 0d |  | 168h | 50,400 | 50,400 |
| 31 | 5.3.1 | Распоряжение о передаче ИСУП в промышленную эксплуатацию | milestone | 0d | 2023-06-26 | 2023-06-26 |  | 2023-06-23 | 2023-06-23 | 0d | 0d |  |  |  |  |
| 32 | 5.3.2 | Подготовка эксплуатационной документации |  | 21d | 2023-06-27 | 2023-07-25 | 31 | 2023-06-26 | 2023-07-24 | 21d | 0d | Исакова П.Д | 168h | 50,400 | 50,400 |
| 33 | 5.3.3 | Передача ИСУП в промышленную эксплуатацию | milestone | 0d | 2023-07-25 | 2023-07-25 | 32 | 2023-07-24 | 2023-07-24 | 0d | 0d |  |  |  |  |
